# پروژه قطعه سازی

How a schedule from MS Project changed from version to version. A marks actual dates.

## Version 1 (saved 2024-08-07)

Note of the change: parsamsp

| ID | WBS | Task | Duration | Start | Finish | Predecessors | Total float |
| --- | --- | --- | --- | --- | --- | --- | --- |
| 1 | 1 | **طراحی** | 27d | 2024-09-25 | 2024-10-26 |  | 0d |
| 2 | 1.1 | **تهیه مدل کلی** | 8d | 2024-09-25 | 2024-10-03 |  | 0d |
| 3 |  | اخذ مشخصات کلی | 3d | 2024-09-25 | 2024-09-28 |  | 0d |
| 4 |  | تهیه طرح شماتیک دستی | 4d | 2024-09-29 | 2024-10-02 | 3 | 0d |
| 5 |  | اخذ تاییدیه اولیه | 1d | 2024-10-03 | 2024-10-03 | 4 | 0d |
| 6 | 1.2 | **طراحی و شبیه سازی** | 19d | 2024-10-05 | 2024-10-26 | 2 | 0d |
| 7 | 1.2.1 | **طراحی بدنه** | 13d | 2024-10-05 | 2024-10-19 |  | 0d |
| 8 |  | طراحی کلی بدنه | 5d | 2024-10-05 | 2024-10-09 |  | 0d |
| 9 |  | اخذ تاییدیه | 2d | 2024-10-10 | 2024-10-12 | 8 | 0d |
| 10 |  | طراحی جزئییات و رندرینگ | 6d | 2024-10-13 | 2024-10-19 | 9 | 0d |
| 11 | 1.2.2 | **طراحی اجزا** | 11d | 2024-10-13 | 2024-10-24 |  | 1d |
| 12 |  | طراحی اجزا فلزی | 3d | 2024-10-13 | 2024-10-15 | 9 | 1d |
| 13 |  | طراحی اجزا پلاستیکی | 5d | 2024-10-15 | 2024-10-20 | 12SS+2d | 3d |
| 14 |  | طراحی مدارات الکترونیکی | 8d | 2024-10-16 | 2024-10-24 | 12 | 1d |
| 15 | 1.2.3 | **انجام تست های شبیه سازی** | 6d | 2024-10-20 | 2024-10-26 |  | 0d |
| 16 |  | شبیه سازی فشار و حرارت بدنه | 3d | 2024-10-20 | 2024-10-22 | 10 | 0d |
| 17 |  | شبیه سازی فشارو حرارت اجزا فلزی | 3d | 2024-10-23 | 2024-10-26 | 16, 12 | 0d |
| 18 |  | شبیه سازی فشار و حرارت اجزا پلاستیکی | 2d | 2024-10-23 | 2024-10-24 | 16, 13 | 1d |
| 19 | 2 | **تهیه ملزومات** | 8d | 2024-10-27 | 2024-11-04 | 1 | 0d |
| 20 | 2.1 | **تهیه قطعات الکترونیکی** | 7d | 2024-10-27 | 2024-11-03 |  | 1d |
| 21 |  | تهیه لیست | 2d | 2024-10-27 | 2024-10-28 |  | 1d |
| 22 |  | استعلام | 1d | 2024-10-29 | 2024-10-29 | 21 | 1d |
| 23 |  | خرید | 1d | 2024-11-03 | 2024-11-03 | 22FS+3d | 1d |
| 24 | 2.2 | **تهیه قطعات فلزی** | 8d | 2024-10-27 | 2024-11-04 |  | 0d |
| 25 |  | تهیه لیست | 2d | 2024-10-27 | 2024-10-28 |  | 0d |
| 26 |  | استعلام | 1d | 2024-10-29 | 2024-10-29 | 25 | 0d |
| 27 |  | خرید | 1d | 2024-11-03 | 2024-11-03 | 26FS+3d | 0d |
| 28 |  | انتقال | 1d | 2024-11-04 | 2024-11-04 | 27 | 0d |
| 29 | 3 | **ساخت** | 33d | 2024-11-05 | 2024-12-12 | 19 | 0d |
| 30 | 3.1 | **ساخت قطعات فلزی** | 22d | 2024-11-05 | 2024-11-30 |  | 0d |
| 31 |  | قالب سازی | 15d | 2024-11-05 | 2024-11-21 |  | 0d |
| 32 |  | ریخته گری | 2d | 2024-11-23 | 2024-11-24 | 31 | 0d |
| 33 |  | تراشکاری | 3d | 2024-11-25 | 2024-11-27 | 32 | 0d |
| 34 |  | سوراخ کاری و قلاویز | 2d | 2024-11-28 | 2024-11-30 | 33 | 0d |
| 35 | 3.2 | **ساخت قطعات پلاستیکی** | 33d | 2024-11-05 | 2024-12-12 |  | 0d |
| 36 |  | قالب سازی | 10d | 2024-11-05 | 2024-11-16 |  | 18d |
| 37 |  | تزریق پلاستیک | 3d | 2024-11-17 | 2024-11-19 | 36 | 18d |
| 38 |  | تراشکاری و سوراخ کاری | 2d | 2024-11-20 | 2024-11-21 | 37 | 18d |
| 39 | 3.2.4 | **مونتاژ نهایی** | 11d | 2024-12-01 | 2024-12-12 | 30 | 0d |
| 40 |  | سوار کردن قطعات فلزی روی بدنه | 4d | 2024-12-01 | 2024-12-04 |  | 0d |
| 41 |  | سوار کردن قطعات پلاستیکی روی بدنه | 2d | 2024-12-05 | 2024-12-07 | 40 | 0d |
| 42 |  | نصب قطعات الکترونیکی | 3d | 2024-12-08 | 2024-12-10 | 41 | 0d |
| 43 |  | تست مکانیکی | 1d | 2024-12-11 | 2024-12-11 | 42 | 0d |
| 44 |  | تست اولیه | 1d | 2024-12-12 | 2024-12-12 | 43 | 0d |

## Version 2 (saved 2024-08-14)

Note of the change: parsamsp2

Last finish 2024-12-12 → 2024-12-15 (+3d).

Added:

| ID | Task | Duration | Start | Finish | Predecessors |
| --- | --- | --- | --- | --- | --- |
| 3 | شروع فاز ۱ | 0d | 2024-09-25 | 2024-09-25 |  |
| 20 | پایان فاز ۱ | 0d | 2024-10-28 | 2024-10-28 | 19 |
| 34 | سرد شدن | 2ed | 2024-11-06 | 2024-11-08 |  |

Changed:

| ID | Task | Start | Finish | Duration | Total float | Predecessors |
| --- | --- | --- | --- | --- | --- | --- |
| 1 | **طراحی** |  | 2024-10-26 → 2024-10-28 (+2d) | 27d → 29d |  |  |
| 4 | اخذ مشخصات کلی |  |  |  |  | none → 3 |
| 7 | **طراحی و شبیه سازی** |  | 2024-10-26 → 2024-10-28 (+2d) | 19d → 21d |  |  |
| 16 | **انجام تست های شبیه سازی** |  | 2024-10-26 → 2024-10-28 (+2d) | 6d → 8d |  |  |
| 19 | شبیه سازی فشار و حرارت اجزا پلاستیکی | 2024-10-23 → 2024-10-27 (+4d) | 2024-10-24 → 2024-10-28 (+4d) |  | 1d → 0d | 17, 14 → 17, 14, 18 |
| 21 | **تهیه ملزومات** | 2024-10-27 → 2024-10-29 (+2d) | 2024-11-04 → 2024-11-06 (+2d) |  |  |  |
| 22 | **تهیه قطعات الکترونیکی** | 2024-10-27 → 2024-10-29 (+2d) | 2024-11-03 → 2024-11-05 (+2d) |  |  |  |
| 23 | تهیه لیست | 2024-10-27 → 2024-10-29 (+2d) | 2024-10-28 → 2024-10-30 (+2d) |  |  |  |
| 24 | استعلام | 2024-10-29 → 2024-10-31 (+2d) | 2024-10-29 → 2024-10-31 (+2d) |  |  |  |
| 25 | خرید | 2024-11-03 → 2024-11-05 (+2d) | 2024-11-03 → 2024-11-05 (+2d) |  |  |  |
| 26 | **تهیه قطعات فلزی** | 2024-10-27 → 2024-10-29 (+2d) | 2024-11-04 → 2024-11-06 (+2d) |  |  |  |
| 27 | تهیه لیست | 2024-10-27 → 2024-10-29 (+2d) | 2024-10-28 → 2024-10-30 (+2d) |  |  |  |
| 28 | استعلام | 2024-10-29 → 2024-10-31 (+2d) | 2024-10-29 → 2024-10-31 (+2d) |  |  |  |
| 29 | خرید | 2024-11-03 → 2024-11-05 (+2d) | 2024-11-03 → 2024-11-05 (+2d) |  |  |  |
| 30 | انتقال | 2024-11-04 → 2024-11-06 (+2d) | 2024-11-04 → 2024-11-06 (+2d) |  |  |  |
| 31 | **ساخت** | 2024-11-05 → 2024-11-06 (+1d) | 2024-12-12 → 2024-12-15 (+3d) |  |  |  |
| 32 | **ساخت قطعات فلزی** | 2024-11-05 → 2024-11-06 (+1d) | 2024-11-30 → 2024-12-02 (+2d) |  |  |  |
| 33 | قالب سازی | 2024-11-05 → 2024-11-07 (+2d) | 2024-11-21 → 2024-11-24 (+3d) |  |  |  |
| 35 | ریخته گری | 2024-11-23 → 2024-11-25 (+2d) | 2024-11-24 → 2024-11-26 (+2d) |  |  |  |
| 36 | تراشکاری | 2024-11-25 → 2024-11-27 (+2d) | 2024-11-27 → 2024-11-30 (+3d) |  |  |  |
| 37 | سوراخ کاری و قلاویز | 2024-11-28 → 2024-12-01 (+3d) | 2024-11-30 → 2024-12-02 (+2d) |  |  |  |
| 38 | **ساخت قطعات پلاستیکی** | 2024-11-05 → 2024-11-07 (+2d) | 2024-12-12 → 2024-12-15 (+3d) |  |  |  |
| 39 | قالب سازی | 2024-11-05 → 2024-11-07 (+2d) | 2024-11-16 → 2024-11-18 (+2d) |  |  |  |
| 40 | تزریق پلاستیک | 2024-11-17 → 2024-11-19 (+2d) | 2024-11-19 → 2024-11-21 (+2d) |  |  |  |
| 41 | تراشکاری و سوراخ کاری | 2024-11-20 → 2024-11-23 (+3d) | 2024-11-21 → 2024-11-24 (+3d) |  |  |  |
| 42 | **مونتاژ نهایی** | 2024-12-01 → 2024-12-03 (+2d) | 2024-12-12 → 2024-12-15 (+3d) |  |  |  |
| 43 | سوار کردن قطعات فلزی روی بدنه | 2024-12-01 → 2024-12-03 (+2d) | 2024-12-04 → 2024-12-07 (+3d) |  |  |  |
| 44 | سوار کردن قطعات پلاستیکی روی بدنه | 2024-12-05 → 2024-12-08 (+3d) | 2024-12-07 → 2024-12-09 (+2d) |  |  |  |
| 45 | نصب قطعات الکترونیکی | 2024-12-08 → 2024-12-10 (+2d) | 2024-12-10 → 2024-12-12 (+2d) |  |  |  |
| 46 | تست مکانیکی | 2024-12-11 → 2024-12-14 (+3d) | 2024-12-11 → 2024-12-14 (+3d) |  |  |  |
| 47 | تست اولیه | 2024-12-12 → 2024-12-15 (+3d) | 2024-12-12 → 2024-12-15 (+3d) |  |  |  |

## Version 3 (saved 2024-08-21)

Note of the change: parsa3

Last finish stays 2024-12-15. Complete tasks 0 → 1.

Changed:

| ID | Task | Start | Finish | Complete | Total float | Other |
| --- | --- | --- | --- | --- | --- | --- |
| 13 | طراحی اجزا فلزی |  |  |  | 3d → 10d | resources none → مکانیک |
| 18 | شبیه سازی فشارو حرارت اجزا فلزی |  |  |  | 0d → 7d | resources none → مکانیک; برق |
| 19 | شبیه سازی فشار و حرارت اجزا پلاستیکی |  |  |  | 0d → 7d | resources none → مکانیک |
| 31 | **ساخت** | 2024-11-06 A |  | 0% → 4% |  |  |
| 32 | **ساخت قطعات فلزی** | 2024-11-06 A |  | 0% → 7% |  |  |
| 33 | قالب سازی |  |  |  | 0d → 7d | resources none → مکانیک |
| 35 | ریخته گری | 2024-11-25 A | 2024-11-26 A | 0% → 100% | 0d → none | resources none → مس [0.2 تن]; اهن [2.5 تن]; هزینه ریخته گری [0.1%]; برق |
| 36 | تراشکاری |  |  |  |  | resources none → مکانیک; متلوژی; برق |
| 44 | سوار کردن قطعات پلاستیکی روی بدنه |  |  |  |  | resources none → مکانیک |

## Version 4 (saved 2024-08-28)

Note of the change: parsa4

Last finish stays 2024-12-15.

Changed:

| ID | Task | Total float | Other |
| --- | --- | --- | --- |
| 11 | طراحی جزئییات و رندرینگ |  | resources none → مکانیک [400%] |
| 14 | طراحی اجزا پلاستیکی | 5d → 12d | resources none → مکانیک [300%] |

## Version 5 (saved 2024-09-11)

Note of the change: msp

Last finish stays 2024-12-15. Complete tasks 1 → 3.

Changed:

| ID | Task | Start | Finish | Duration | Complete | Total float | Other |
| --- | --- | --- | --- | --- | --- | --- | --- |
| 1 | **طراحی** | 2024-09-25 A |  |  | 0% → 41% | 2d → 7d | baseline start none → 2024-09-25; baseline finish none → 2024-10-28 |
| 2 | **تهیه مدل کلی** | 2024-09-25 A |  |  | 0% → 25% | 2d → 0d | baseline start none → 2024-09-25; baseline finish none → 2024-10-03 |
| 3 | شروع فاز ۱ |  |  |  |  |  | baseline start none → 2024-09-25; baseline finish none → 2024-09-25 |
| 4 | اخذ مشخصات کلی | 2024-09-25 A |  |  | 0% → 67% | 2d → 0d | baseline start none → 2024-09-25; baseline finish none → 2024-09-28 |
| 5 | تهیه طرح شماتیک دستی |  |  |  |  | 2d → 0d | baseline start none → 2024-09-29; baseline finish none → 2024-10-02 |
| 6 | اخذ تاییدیه اولیه |  |  |  |  | 2d → 0d | baseline start none → 2024-10-03; baseline finish none → 2024-10-03 |
| 7 | **طراحی و شبیه سازی** | 2024-10-05 A |  |  | 0% → 45% | 2d → 7d | baseline start none → 2024-10-05; baseline finish none → 2024-10-28 |
| 8 | **طراحی بدنه** | 2024-10-05 A |  |  | 0% → 50% | 2d → 7d | baseline start none → 2024-10-05; baseline finish none → 2024-10-19 |
| 9 | طراحی کلی بدنه | 2024-10-05 A | 2024-10-09 A |  | 0% → 100% | 2d → none | baseline start none → 2024-10-05; baseline finish none → 2024-10-09 |
| 10 | اخذ تاییدیه | 2024-10-10 A |  |  | 0% → 75% |  | baseline start none → 2024-10-10; baseline finish none → 2024-10-12 |
| 11 | طراحی جزئییات و رندرینگ |  |  |  |  |  | baseline start none → 2024-10-13; baseline finish none → 2024-10-19 |
| 12 | **طراحی اجزا** | 2024-10-13 A | 2024-10-24 → 2024-10-23 (-1d) | 11d → 10d | 0% → 63% | 10d → 9d | baseline start none → 2024-10-13; baseline finish none → 2024-10-24 |
| 13 | طراحی اجزا فلزی |  |  |  |  | 10d → 3d | baseline start none → 2024-10-13; baseline finish none → 2024-10-15 |
| 14 | طراحی اجزا پلاستیکی | 2024-10-15 A | 2024-10-20 → 2024-10-21 (+1d) | 5d → 6d | 0% → 50% | 12d → 11d | resources مکانیک [300%] → none; baseline start none → 2024-10-15; baseline finish none → 2024-10-20 |
| 15 | طراحی مدارات الکترونیکی | 2024-10-16 A | 2024-10-24 → 2024-10-23 A (-1d) | 8d → 7d | 0% → 100% | 10d → none | baseline start none → 2024-10-16; baseline finish none → 2024-10-24 |
| 16 | **انجام تست های شبیه سازی** |  |  |  |  |  | baseline start none → 2024-10-20; baseline finish none → 2024-10-28 |
| 17 | شبیه سازی فشار و حرارت بدنه |  |  |  |  |  | baseline start none → 2024-10-20; baseline finish none → 2024-10-22 |
| 18 | شبیه سازی فشارو حرارت اجزا فلزی |  |  |  |  |  | baseline start none → 2024-10-23; baseline finish none → 2024-10-26 |
| 19 | شبیه سازی فشار و حرارت اجزا پلاستیکی |  |  |  |  |  | baseline start none → 2024-10-27; baseline finish none → 2024-10-28 |
| 20 | پایان فاز ۱ |  |  |  |  |  | baseline start none → 2024-10-28; baseline finish none → 2024-10-28 |
| 21 | **تهیه ملزومات** |  |  |  |  |  | baseline start none → 2024-10-29; baseline finish none → 2024-11-06 |
| 22 | **تهیه قطعات الکترونیکی** |  |  |  |  |  | baseline start none → 2024-10-29; baseline finish none → 2024-11-05 |
| 23 | تهیه لیست |  |  |  |  |  | baseline start none → 2024-10-29; baseline finish none → 2024-10-30 |
| 24 | استعلام |  |  |  |  |  | baseline start none → 2024-10-31; baseline finish none → 2024-10-31 |
| 25 | خرید |  |  |  |  |  | baseline start none → 2024-11-05; baseline finish none → 2024-11-05 |
| 26 | **تهیه قطعات فلزی** |  |  |  |  |  | baseline start none → 2024-10-29; baseline finish none → 2024-11-06 |
| 27 | تهیه لیست |  |  |  |  |  | baseline start none → 2024-10-29; baseline finish none → 2024-10-30 |
| 28 | استعلام |  |  |  |  |  | baseline start none → 2024-10-31; baseline finish none → 2024-10-31 |
| 29 | خرید |  |  |  |  |  | baseline start none → 2024-11-05; baseline finish none → 2024-11-05 |
| 30 | انتقال |  |  |  |  |  | baseline start none → 2024-11-06; baseline finish none → 2024-11-06 |
| 31 | **ساخت** |  |  |  |  |  | baseline start none → 2024-11-06; baseline finish none → 2024-12-15 |
| 32 | **ساخت قطعات فلزی** |  |  |  |  |  | baseline start none → 2024-11-06; baseline finish none → 2024-12-02 |
| 33 | قالب سازی |  |  |  |  |  | baseline start none → 2024-11-07; baseline finish none → 2024-11-24 |
| 34 | سرد شدن |  |  |  |  |  | baseline start none → 2024-11-06; baseline finish none → 2024-11-08 |
| 35 | ریخته گری |  |  |  |  |  | baseline start none → 2024-11-25; baseline finish none → 2024-11-26 |
| 36 | تراشکاری |  |  |  |  |  | baseline start none → 2024-11-27; baseline finish none → 2024-11-30 |
| 37 | سوراخ کاری و قلاویز |  |  |  |  |  | baseline start none → 2024-12-01; baseline finish none → 2024-12-02 |
| 38 | **ساخت قطعات پلاستیکی** |  |  |  |  |  | baseline start none → 2024-11-07; baseline finish none → 2024-12-15 |
| 39 | قالب سازی |  |  |  |  |  | baseline start none → 2024-11-07; baseline finish none → 2024-11-18 |
| 40 | تزریق پلاستیک |  |  |  |  |  | baseline start none → 2024-11-19; baseline finish none → 2024-11-21 |
| 41 | تراشکاری و سوراخ کاری |  |  |  |  |  | baseline start none → 2024-11-23; baseline finish none → 2024-11-24 |
| 42 | **مونتاژ نهایی** |  |  |  |  |  | baseline start none → 2024-12-03; baseline finish none → 2024-12-15 |
| 43 | سوار کردن قطعات فلزی روی بدنه |  |  |  |  |  | baseline start none → 2024-12-03; baseline finish none → 2024-12-07 |
| 44 | سوار کردن قطعات پلاستیکی روی بدنه |  |  |  |  |  | baseline start none → 2024-12-08; baseline finish none → 2024-12-09 |
| 45 | نصب قطعات الکترونیکی |  |  |  |  |  | baseline start none → 2024-12-10; baseline finish none → 2024-12-12 |
| 46 | تست مکانیکی |  |  |  |  |  | baseline start none → 2024-12-14; baseline finish none → 2024-12-14 |
| 47 | تست اولیه |  |  |  |  |  | baseline start none → 2024-12-15; baseline finish none → 2024-12-15 |

## Version 6 (data date 2024-12-10, saved 2024-09-25)

Note of the change: mspfinalproject

Last finish 2024-12-15 → 2024-12-17 (+2d). Complete tasks 3 → 34.

Changed:

| ID | Task | Start | Finish | Duration | Complete | Total float | Other |
| --- | --- | --- | --- | --- | --- | --- | --- |
| 1 | **طراحی** |  | 2024-10-28 → 2024-10-31 A (+3d) | 29d → 32d | 41% → 100% | 7d → none |  |
| 2 | **تهیه مدل کلی** |  | 2024-10-03 A |  | 25% → 100% | 0d → none |  |
| 3 | شروع فاز ۱ | 2024-09-25 A | 2024-09-25 A |  | 0% → 100% | 2d → none |  |
| 4 | اخذ مشخصات کلی |  | 2024-09-28 A |  | 67% → 100% | 0d → none | resources none → متلوژی |
| 5 | تهیه طرح شماتیک دستی | 2024-09-29 A | 2024-10-02 A |  | 0% → 100% | 0d → none | resources none → مکانیک |
| 6 | اخذ تاییدیه اولیه | 2024-10-03 A | 2024-10-03 A |  | 0% → 100% | 0d → none | resources none → معاون اجرایی |
| 7 | **طراحی و شبیه سازی** |  | 2024-10-28 → 2024-10-31 A (+3d) | 21d → 24d | 45% → 100% | 7d → none |  |
| 8 | **طراحی بدنه** |  | 2024-10-19 → 2024-10-21 A (+2d) | 13d → 15d | 50% → 100% | 7d → none |  |
| 9 | طراحی کلی بدنه |  | 2024-10-09 A → 2024-10-12 A (+3d) | 5d → 7d |  |  | resources none → مکانیک [200%] |
| 10 | اخذ تاییدیه | 2024-10-10 A → 2024-10-13 A (+3d) | 2024-10-12 → 2024-10-14 A (+2d) |  | 75% → 100% | 2d → none |  |
| 11 | طراحی جزئییات و رندرینگ | 2024-10-13 → 2024-10-15 A (+2d) | 2024-10-19 → 2024-10-21 A (+2d) |  | 0% → 100% | 7d → none |  |
| 12 | **طراحی اجزا** | 2024-10-13 A → 2024-10-15 A (+2d) | 2024-10-23 → 2024-10-26 A (+3d) |  | 63% → 100% | 9d → none | baseline finish 2024-10-24 → 2024-10-23 |
| 13 | طراحی اجزا فلزی | 2024-10-13 → 2024-10-15 A (+2d) | 2024-10-15 → 2024-10-17 A (+2d) |  | 0% → 100% | 3d → none |  |
| 14 | طراحی اجزا پلاستیکی | 2024-10-15 A → 2024-10-17 A (+2d) | 2024-10-21 → 2024-10-23 A (+2d) |  | 50% → 100% | 11d → none | resources none → متلوژی; مکانیک; baseline finish 2024-10-20 → 2024-10-21 |
| 15 | طراحی مدارات الکترونیکی | 2024-10-16 A → 2024-10-19 A (+3d) | 2024-10-23 A → 2024-10-26 A (+3d) |  |  |  | resources none → برق; baseline finish 2024-10-24 → 2024-10-23 |
| 16 | **انجام تست های شبیه سازی** | 2024-10-20 → 2024-10-23 A (+3d) | 2024-10-28 → 2024-10-31 A (+3d) |  | 0% → 100% | 7d → none |  |
| 17 | شبیه سازی فشار و حرارت بدنه | 2024-10-20 → 2024-10-23 A (+3d) | 2024-10-22 → 2024-10-26 A (+4d) |  | 0% → 100% | 7d → none | resources none → متلوژی; مکانیک |
| 18 | شبیه سازی فشارو حرارت اجزا فلزی | 2024-10-23 → 2024-10-27 A (+4d) | 2024-10-26 → 2024-10-29 A (+3d) |  | 0% → 100% | 7d → none |  |
| 19 | شبیه سازی فشار و حرارت اجزا پلاستیکی | 2024-10-27 → 2024-10-30 A (+3d) | 2024-10-28 → 2024-10-31 A (+3d) |  | 0% → 100% | 7d → none |  |
| 20 | پایان فاز ۱ | 2024-10-28 → 2024-10-31 A (+3d) | 2024-10-28 → 2024-10-31 A (+3d) |  | 0% → 100% | 7d → none |  |
| 21 | **تهیه ملزومات** | 2024-10-29 → 2024-11-02 A (+4d) | 2024-11-06 → 2024-11-10 A (+4d) |  | 0% → 100% | 7d → none |  |
| 22 | **تهیه قطعات الکترونیکی** | 2024-10-29 → 2024-11-02 A (+4d) | 2024-11-05 → 2024-11-09 A (+4d) |  | 0% → 100% | 8d → none |  |
| 23 | تهیه لیست | 2024-10-29 → 2024-11-02 A (+4d) | 2024-10-30 → 2024-11-03 A (+4d) |  | 0% → 100% | 8d → none |  |
| 24 | استعلام | 2024-10-31 → 2024-11-04 A (+4d) | 2024-10-31 → 2024-11-04 A (+4d) |  | 0% → 100% | 8d → none |  |
| 25 | خرید | 2024-11-05 → 2024-11-09 A (+4d) | 2024-11-05 → 2024-11-09 A (+4d) |  | 0% → 100% | 8d → none |  |
| 26 | **تهیه قطعات فلزی** | 2024-10-29 → 2024-11-02 A (+4d) | 2024-11-06 → 2024-11-10 A (+4d) |  | 0% → 100% | 7d → none |  |
| 27 | تهیه لیست | 2024-10-29 → 2024-11-02 A (+4d) | 2024-10-30 → 2024-11-03 A (+4d) |  | 0% → 100% | 7d → none |  |
| 28 | استعلام | 2024-10-31 → 2024-11-04 A (+4d) | 2024-10-31 → 2024-11-04 A (+4d) |  | 0% → 100% | 7d → none |  |
| 29 | خرید | 2024-11-05 → 2024-11-09 A (+4d) | 2024-11-05 → 2024-11-09 A (+4d) |  | 0% → 100% | 7d → none |  |
| 30 | انتقال | 2024-11-06 → 2024-11-10 A (+4d) | 2024-11-06 → 2024-11-10 A (+4d) |  | 0% → 100% | 7d → none |  |
| 31 | **ساخت** | 2024-11-06 A → 2024-11-10 A (+4d) | 2024-12-15 → 2024-12-17 A (+2d) | 33d → 32d | 4% → 100% | 0d → none | baseline finish 2024-12-15 → 2024-12-14 |
| 32 | **ساخت قطعات فلزی** | 2024-11-06 A → 2024-11-10 A (+4d) | 2024-12-02 → 2024-12-04 A (+2d) | 22d → 21d | 7% → 100% | 0d → none | baseline finish 2024-12-02 → 2024-12-01 |
| 33 | قالب سازی | 2024-11-07 → 2024-11-11 A (+4d) | 2024-11-24 → 2024-11-27 A (+3d) |  | 0% → 100% | 7d → none |  |
| 34 | سرد شدن | 2024-11-06 → 2024-11-10 A (+4d) | 2024-11-08 → 2024-11-12 A (+4d) |  | 0% → 100% | 73.88d → none |  |
| 35 | ریخته گری | 2024-11-25 A → 2024-11-28 A (+3d) | 2024-11-26 A → 2024-11-30 A (+4d) |  |  |  | constraint none → start no earlier than 2024-11-25 |
| 36 | تراشکاری | 2024-11-27 → 2024-12-01 A (+4d) | 2024-11-30 → 2024-12-02 A (+2d) | 3d → 2d | 0% → 100% | 0d → none | baseline finish 2024-11-30 → 2024-11-28 |
| 37 | سوراخ کاری و قلاویز | 2024-12-01 → 2024-12-03 A (+2d) | 2024-12-02 → 2024-12-04 A (+2d) |  | 0% → 100% | 0d → none | baseline start 2024-12-01 → 2024-11-30; baseline finish 2024-12-02 → 2024-12-01 |
| 38 | **ساخت قطعات پلاستیکی** | 2024-11-07 → 2024-11-11 A (+4d) | 2024-12-15 → 2024-12-17 A (+2d) | 33d → 32d | 0% → 100% | 0d → none | baseline finish 2024-12-15 → 2024-12-14 |
| 39 | قالب سازی | 2024-11-07 → 2024-11-11 A (+4d) | 2024-11-18 → 2024-11-21 A (+3d) |  | 0% → 100% | 18d → none |  |
| 40 | تزریق پلاستیک | 2024-11-19 → 2024-11-23 A (+4d) | 2024-11-21 → 2024-11-25 A (+4d) |  | 0% → 100% | 18d → none |  |
| 41 | تراشکاری و سوراخ کاری | 2024-11-23 → 2024-11-26 A (+3d) | 2024-11-24 → 2024-11-27 A (+3d) |  | 0% → 100% | 18d → none |  |
| 42 | **مونتاژ نهایی** | 2024-12-03 → 2024-12-05 A (+2d) | 2024-12-15 → 2024-12-17 A (+2d) |  | 0% → 100% | 0d → none | baseline start 2024-12-03 → 2024-12-02; baseline finish 2024-12-15 → 2024-12-14 |
| 43 | سوار کردن قطعات فلزی روی بدنه | 2024-12-03 → 2024-12-05 A (+2d) | 2024-12-07 → 2024-12-09 A (+2d) |  | 0% → 100% | 0d → none | resources none → ربات مونتاژ; baseline start 2024-12-03 → 2024-12-02; baseline finish 2024-12-07 → 2024-12-05 |
| 44 | سوار کردن قطعات پلاستیکی روی بدنه | 2024-12-08 → 2024-12-10 A (+2d) | 2024-12-09 → 2024-12-11 A (+2d) |  | 0% → 100% | 0d → none | baseline start 2024-12-08 → 2024-12-07; baseline finish 2024-12-09 → 2024-12-08 |
| 45 | نصب قطعات الکترونیکی | 2024-12-10 → 2024-12-12 A (+2d) | 2024-12-12 → 2024-12-15 A (+3d) |  | 0% → 100% | 0d → none | resources none → ربات مونتاژ; baseline start 2024-12-10 → 2024-12-09; baseline finish 2024-12-12 → 2024-12-11 |
| 46 | تست مکانیکی | 2024-12-14 → 2024-12-16 A (+2d) | 2024-12-14 → 2024-12-16 A (+2d) |  | 0% → 100% | 0d → none | baseline start 2024-12-14 → 2024-12-12; baseline finish 2024-12-14 → 2024-12-12 |
| 47 | تست اولیه | 2024-12-15 → 2024-12-17 A (+2d) | 2024-12-15 → 2024-12-17 A (+2d) |  | 0% → 100% | 0d → none | baseline start 2024-12-15 → 2024-12-14; baseline finish 2024-12-15 → 2024-12-14 |
